# National Health Campaign

Schedule from MS Project, 2009-10-12 to 2009-11-30, costs in $, A marks actual dates.
Research Programme
ABC Research Ltd.

## Calendars

- Standard: Mon-Fri 08:00-12:00, 13:00-17:00; Sat-Sun off.

## Resources

| Resource | Group | Rate |
| --- | --- | --- |
| Joanne Kelly | Management | 19.23 |
| Riona Carr | Executive | 6.25 |
| Mary breen | Management | 19.23 |
| Tom Joyce | Office Staff | 6.88 |
| Conf Room | Facilities |  |
| Junior Staff | Office Staff | 3.75 |
| Printing | External |  |

## Schedule

| ID | WBS | Task | Type | Duration | Start | Finish | Predecessors | Complete | Remaining | Baseline start | Baseline finish | Baseline duration | Total slack | Free slack | Constraint | Resources | Work | Actual work | Cost | Baseline cost | Actual cost |
| --- | --- | --- | --- | --- | --- | --- | --- | --- | --- | --- | --- | --- | --- | --- | --- | --- | --- | --- | --- | --- | --- |
| 1 | 1 | **National Health** |  | 36d | 2009-10-12 A | 2009-11-30 |  | 11% | 32.13d | 2009-10-12 | 2009-11-27 | 35d | 0d |  |  |  | 456h | 40h | 4,364.42 | 4,314.42 | 457.69 |
| 2 | 1.1 | **Survey Setup** |  | 36d | 2009-10-12 A | 2009-11-30 |  | 11% | 32.13d | 2009-10-12 | 2009-11-27 | 35d | 0d |  |  |  | 456h | 40h | 4,364.42 | 4,314.42 | 457.69 |
| 3 | 1.1.1 | **Planning** |  | 9d | 2009-10-12 A | 2009-10-22 |  | 42% | 5.25d | 2009-10-12 | 2009-10-21 | 8d | 27d |  |  |  | 96h | 40h | 537.69 | 487.69 | 457.69 |
| 4 | 1.1.1.1 | Design questionnaire |  | 2d | 2009-10-12 A | 2009-10-13 A |  | 100% |  | 2009-10-12 | 2009-10-13 | 2d |  |  |  | Joanne Kelly | 16h | 16h | 307.69 | 307.69 | 307.69 |
| 5 | 1.1.1.2 | Type questionnaire |  | 1d | 2009-10-15 | 2009-10-15 | 4 |  |  | 2009-10-14 | 2009-10-14 | 1d | 0d |  | finish no earlier than 2009-10-15 | Junior Staff | 8h |  | 30 | 30 |  |
| 6 | 1.1.1.3 | Print questionnaire |  | 1w | 2009-10-16 | 2009-10-22 | 5 |  |  | 2009-10-15 | 2009-10-21 | 1w | 0d |  |  | Printing | 40h |  |  |  |  |
| 7 | 1.1.1.4 | Invite interviewers to briefing meeting |  | 4d | 2009-10-16 A | 2009-10-21 | 6SS | 75% | 1d | 2009-10-15 | 2009-10-19 | 3d | 28d | 0d |  | Riona Carr | 32h | 24h | 200 | 150 | 150 |
| 8 | 1.1.1.5 | Survey planning complete | milestone | 0d | 2009-10-21 | 2009-10-21 | 4, 7 |  |  | 2009-10-19 | 2009-10-19 | 0d | 28d |  |  |  |  |  |  |  |  |
| 9 | 1.1.2 | **Briefing Setup** |  | 9.5d | 2009-10-23 | 2009-11-05 |  |  |  | 2009-10-22 | 2009-11-04 | 9.5d | 0d |  |  |  | 84h |  | 472.5 | 472.5 |  |
| 10 | 1.1.2.1 | Book conference room for briefing meeting |  | 4h | 2009-10-23 | 2009-10-23 | 6 |  |  | 2009-10-22 | 2009-10-22 | 4h | 0d |  |  | Tom Joyce | 4h |  | 27.5 | 27.5 |  |
| 11 | 1.1.2.2 | Contact interviewing locations |  | 2d | 2009-10-23 | 2009-10-26 | 10SS |  |  | 2009-10-22 | 2009-10-23 | 2d | 0d |  |  | Tom Joyce | 16h |  | 110 | 110 |  |
| 12 | 1.1.2.3 | Prepare rosters |  | 4d | 2009-10-27 | 2009-10-30 | 11 |  |  | 2009-10-26 | 2009-10-29 | 4d | 0d |  |  | Tom Joyce | 32h |  | 220 | 220 |  |
| 13 | 1.1.2.4 | Prepare packs for each interviewer |  | 3d | 2009-11-02 | 2009-11-04 | 12 |  |  | 2009-10-30 | 2009-11-03 | 3d | 0d |  |  | Junior Staff | 24h |  | 90 | 90 |  |
| 14 | 1.1.2.5 | Briefing Meeting with Interviewers |  | 4h | 2009-11-05 | 2009-11-05 | 13 |  |  | 2009-11-04 | 2009-11-04 | 4h | 0d |  |  | Conf Room; Riona Carr | 8h |  | 25 | 25 |  |
| 15 | 1.1.2.6 | Interviewers briefing complete | milestone | 0d | 2009-11-05 | 2009-11-05 | 14 |  |  | 2009-11-04 | 2009-11-04 | 0d | 0d |  |  |  |  |  |  |  |  |
| 16 | 1.1.3 | **Data Processing** |  | 9.5d | 2009-11-05 | 2009-11-18 | 9 |  |  | 2009-11-04 | 2009-11-17 | 9.5d | 0d |  |  |  | 148h |  | 892.69 | 892.69 |  |
| 17 | 1.1.3.1 | Prepare Book-in forms |  | 2d | 2009-11-05 | 2009-11-09 |  |  |  | 2009-11-04 | 2009-11-06 | 2d | 3.5d | 0d |  | Riona Carr | 16h |  | 100 | 100 |  |
| 18 | 1.1.3.2 | Check questionnaires |  | 2d | 2009-11-09 | 2009-11-11 | 17 |  |  | 2009-11-06 | 2009-11-10 | 2d | 3.5d |  |  | Junior Staff | 16h |  | 60 | 60 |  |
| 19 | 1.1.3.3 | Code questionnaires |  | 1.5w | 2009-11-05 | 2009-11-16 | 18FF |  |  | 2009-11-04 | 2009-11-13 | 1.5w | 0d |  |  | Junior Staff | 60h |  | 225 | 225 |  |
| 20 | 1.1.3.4 | Input data in computer |  | 3d | 2009-11-12 | 2009-11-16 | 19FS-3d |  |  | 2009-11-11 | 2009-11-13 | 3d | 0d |  |  | Junior Staff | 24h |  | 90 | 90 |  |
| 21 | 1.1.3.5 | Analyse the data |  | 2d | 2009-11-17 | 2009-11-18 | 20 |  |  | 2009-11-16 | 2009-11-17 | 2d | 0d |  |  | Joanne Kelly; Tom Joyce | 32h |  | 417.69 | 417.69 |  |
| 22 | 1.1.3.6 | Data processing complete | milestone | 0d | 2009-11-18 | 2009-11-18 | 21 |  |  | 2009-11-17 | 2009-11-17 | 0d | 0d |  |  |  |  |  |  |  |  |
| 23 | 1.1.4 | **Interpretation** |  | 8d | 2009-11-19 | 2009-11-30 | 16 |  |  | 2009-11-18 | 2009-11-27 | 8d | 0d |  |  |  | 128h |  | 2,461.54 | 2,461.54 |  |
| 24 | 1.1.4.1 | Prepare presentation |  | 3d | 2009-11-19 | 2009-11-23 |  |  |  | 2009-11-18 | 2009-11-20 | 3d | 0d |  |  | Mary breen; Joanne Kelly | 48h |  | 923.08 | 923.08 |  |
| 25 | 1.1.4.2 | Prepare research report |  | 1w | 2009-11-24 | 2009-11-30 | 24 |  |  | 2009-11-23 | 2009-11-27 | 1w | 0d |  |  | Joanne Kelly; Mary breen | 80h |  | 1,538.46 | 1,538.46 |  |
| 26 | 1.1.4.3 | Project complete | milestone | 0d | 2009-11-30 | 2009-11-30 | 25 |  |  | 2009-11-27 | 2009-11-27 | 0d | 0d |  |  |  |  |  |  |  |  |
